How a schedule from MS Project changed from version to version. A marks actual dates.

## Version 1 (saved 2022-10-06)

Note of the change: Create Projeto1.mpp

| ID | WBS | Task | Duration | Start | Finish | Predecessors | Total float |
| --- | --- | --- | --- | --- | --- | --- | --- |
| 1 | 1 | **UNIVERSIDADE** | 76d | 2022-10-06 | 2023-01-19 |  | 0d |
| 2 | 1.1 | **Prospecção** | 8d | 2022-10-06 | 2022-10-17 |  | 0d |
| 3 |  | Levantar o escopo | 2d | 2022-10-06 | 2022-10-07 |  | 0d |
| 4 |  | Criar estimativa inicial do projeto | 2d | 2022-10-10 | 2022-10-11 | 3 | 0d |
| 5 |  | Gerar orçamento preliminar | 2d | 2022-10-12 | 2022-10-13 | 4 | 0d |
| 6 |  | Obter assinatura de contrato | 2d | 2022-10-14 | 2022-10-17 | 5 | 0d |
| 7 | 1.2 | **Planejamento** | 15d | 2022-10-18 | 2022-11-07 | 2 | 0d |
| 8 |  | Plano para o projeto | 3d | 2022-10-18 | 2022-10-20 |  | 0d |
| 9 |  | Identificar os riscos | 3d | 2022-10-21 | 2022-10-25 | 8 | 3d |
| 10 |  | Preparar documento dos requisitos | 4d | 2022-10-26 | 2022-10-31 | 9 | 3d |
| 11 |  | Detalhar as estimativas | 2d | 2022-11-01 | 2022-11-02 | 10 | 3d |
| 12 |  | Criar o cronograma | 2d | 2022-10-21 | 2022-10-24 | 8 | 0d |
| 13 |  | Obter assinatura do cliente | 2d | 2022-10-25 | 2022-10-26 | 12 | 0d |
| 14 |  | Fazer os diagramas de UML | 8d | 2022-10-27 | 2022-11-07 | 13 | 0d |
| 15 | 1.3 | **Execução** | 46d | 2022-11-08 | 2023-01-10 | 7 | 0d |
| 16 | 1.3.1 | **Banco de dados** | 26d | 2022-11-08 | 2022-12-13 |  | 0d |
| 17 |  | Criar o script do banco de dados | 5d | 2022-11-08 | 2022-11-14 |  | 0d |
| 19 |  | 001 – Cria Cadastro de Alunos | 5d | 2022-11-15 | 2022-11-21 | 17 | 4d |
| 20 |  | 002 – Criar Cadastro de Cursos | 4d | 2022-11-15 | 2022-11-18 | 17 | 0d |
| 21 |  | 003 – Criar Cadastro de Disciplinas | 4d | 2022-11-21 | 2022-11-24 | 20 | 0d |
| 22 |  | 004 – Criar Cadastro de Salas de Aulas | 3d | 2022-11-15 | 2022-11-17 | 17 | 14d |
| 23 |  | 005 – Criar Cadastro de Professores | 4d | 2022-11-25 | 2022-11-30 | 21 | 0d |
| 24 |  | 006 – Criar Cadastro de Notas | 4d | 2022-11-25 | 2022-11-30 | 19, 21 | 1d |
| 25 |  | 007 – Criar Cadastro de Faltas | 4d | 2022-11-22 | 2022-11-25 | 19 | 4d |
| 26 |  | 008 – Criar Relatório de Alunos | 4d | 2022-11-22 | 2022-11-25 | 19 | 7d |
| 27 |  | 009 – Criar Relatório de Cursos | 4d | 2022-11-21 | 2022-11-24 | 20 | 8d |
| 28 |  | 010 – Criar Relatório de Disciplinas | 4d | 2022-11-25 | 2022-11-30 | 21 | 4d |
| 29 |  | 011 – Criar Relatório de Salas de Aulas | 4d | 2022-11-18 | 2022-11-23 | 22 | 14d |
| 30 |  | 012 - Criar Relatório de Professores | 4d | 2022-12-01 | 2022-12-06 | 23 | 0d |
| 31 |  | 013 – Criar Relatório de Notas | 4d | 2022-12-01 | 2022-12-06 | 24 | 1d |
| 32 |  | 014 – Criar Relatório de Faltas | 4d | 2022-11-28 | 2022-12-01 | 25 | 4d |
| 33 |  | 015 – Criar Relatório de Alunos Aprovados | 4d | 2022-12-07 | 2022-12-12 | 26, 31, 32 | 1d |
| 34 |  | 016 – Criar Relatório de Professores por Curso | 5d | 2022-12-07 | 2022-12-13 | 27, 30 | 0d |
| 35 |  | 017 – Criar Relatório de Alunos por Disciplina | 5d | 2022-12-01 | 2022-12-07 | 26, 28 | 4d |
| 36 |  | 018 – Criar Relatório de Alunos por Curso | 4d | 2022-11-28 | 2022-12-01 | 26, 27 | 8d |
| 37 |  | Testar a aplicação | 10d | 2022-12-14 | 2022-12-27 | 16 | 0d |
| 38 |  | Gerar a instalação | 2d | 2022-12-28 | 2022-12-29 | 37 | 0d |
| 39 |  | Fazer o plano de implantação | 2d | 2022-12-30 | 2023-01-02 | 38 | 0d |
| 40 |  | Instalar o sistema | 4d | 2023-01-03 | 2023-01-06 | 39 | 0d |
| 41 |  | Obter a aceitação do cliente | 2d | 2023-01-09 | 2023-01-10 | 40 | 0d |
| 42 | 1.4 | **Monitoramento e Controle** | 5d | 2023-01-11 | 2023-01-17 | 15 | 0d |
| 43 |  | Acompanhar os riscos do projeto | 5d | 2023-01-11 | 2023-01-17 |  | 0d |
| 44 |  | Acompanhar os requisitos do projeto | 4d | 2023-01-11 | 2023-01-16 |  | 1d |
| 45 |  | Atualizar medidas | 3d | 2023-01-11 | 2023-01-13 |  | 2d |
| 46 |  | Executar ações corretivas | 3d | 2023-01-11 | 2023-01-13 |  | 2d |
| 47 | 1.5 | **Fechamento** | 2d | 2023-01-18 | 2023-01-19 | 42 | 0d |
| 48 |  | Documento de fechamento do projeto | 2d | 2023-01-18 | 2023-01-19 |  | 0d |
| 49 |  | Registramos lições aprendidas | 2d | 2023-01-18 | 2023-01-19 |  | 0d |

## Version 2 (saved 2022-10-06)

Note of the change: Update Projeto1.mpp

Last finish 2023-01-19 → 2023-02-08 (+20d).

Added:

| ID | Task | Duration | Start | Finish | Predecessors |
| --- | --- | --- | --- | --- | --- |
| 18 | **Cadastros** | 12d | 2022-11-15 | 2022-11-30 | 17 |
| 26 | **Relatórios** | 13d | 2022-12-01 | 2022-12-19 | 18 |

Changed:

| ID | Task | Start | Finish | Duration | Total float | Predecessors | Other |
| --- | --- | --- | --- | --- | --- | --- | --- |
| 1 | **UNIVERSIDADE** |  | 2023-01-19 → 2023-02-08 (+20d) | 76d → 90d |  |  |  |
| 15 | **Execução** |  | 2023-01-10 → 2023-01-16 (+6d) | 46d → 50d |  |  |  |
| 16 | **Banco de dados** |  | 2022-12-13 → 2022-12-19 (+6d) | 26d → 30d |  |  |  |
| 17 | Criar o script do banco de dados |  |  |  |  |  | resources 2 → 1 |
| 19 | 001 – Cria Cadastro de Alunos |  |  |  | 4d → 3d | 17 → none | resources 3 → 2 |
| 20 | 002 – Criar Cadastro de Cursos |  |  |  |  | 17 → none | resources 4 → 3 |
| 21 | 003 – Criar Cadastro de Disciplinas |  |  |  |  |  | resources 4 → 1 |
| 22 | 004 – Criar Cadastro de Salas de Aulas |  |  |  | 14d → 9d | 17 → none | resources 2 → 4 |
| 25 | 007 – Criar Cadastro de Faltas |  |  |  | 4d → 3d |  | resources 1 → 2 |
| 27 | 008 – Criar Relatório de Alunos | 2022-11-22 → 2022-12-01 (+9d) | 2022-11-25 → 2022-12-06 (+11d) |  | 7d → 0d | 19 → none | resources 3 → 1 |
| 28 | 009 – Criar Relatório de Cursos | 2022-11-21 → 2022-12-01 (+10d) | 2022-11-24 → 2022-12-06 (+12d) |  | 8d → 0d | 20 → none | resources 1 → 2 |
| 29 | 010 – Criar Relatório de Disciplinas | 2022-11-25 → 2022-12-01 (+6d) | 2022-11-30 → 2022-12-06 (+6d) |  | 4d → 0d | 21 → none | resources 2 → 3 |
| 30 | 011 – Criar Relatório de Salas de Aulas | 2022-11-18 → 2022-12-01 (+13d) | 2022-11-23 → 2022-12-06 (+13d) |  | 14d → 9d | 22 → none | resources 2 → 4 |
| 31 | 012 - Criar Relatório de Professores | 2022-12-01 → 2022-12-07 (+6d) | 2022-12-06 → 2022-12-12 (+6d) |  |  | 23 → 28, 29 | resources none → 1 |
| 32 | 013 – Criar Relatório de Notas | 2022-12-01 → 2022-12-07 (+6d) | 2022-12-06 → 2022-12-12 (+6d) |  |  | 24 → 27, 28, 29 | resources none → 2 |
| 33 | 014 – Criar Relatório de Faltas | 2022-11-28 → 2022-12-07 (+9d) | 2022-12-01 → 2022-12-12 (+11d) |  | 4d → 1d | 25 → 27, 28, 29 | resources none → 3 |
| 34 | 015 – Criar Relatório de Alunos Aprovados | 2022-12-07 → 2022-12-13 (+6d) | 2022-12-12 → 2022-12-16 (+4d) |  |  | 27, 32, 33 → 32, 33 | resources none → 1 |
| 35 | 016 – Criar Relatório de Professores por Curso | 2022-12-07 → 2022-12-13 (+6d) | 2022-12-13 → 2022-12-19 (+6d) |  |  | 28, 31 → 31 | resources none → 2 |
| 36 | 017 – Criar Relatório de Alunos por Disciplina | 2022-12-01 → 2022-12-07 (+6d) | 2022-12-07 → 2022-12-13 (+6d) |  | 4d → 0d |  | resources none → 4 |
| 37 | 018 – Criar Relatório de Alunos por Curso | 2022-11-28 → 2022-12-14 (+16d) | 2022-12-01 → 2022-12-19 (+18d) |  | 8d → 0d | 27, 28 → 36 |  |
| 38 | Testar a aplicação | 2022-12-14 → 2022-12-20 (+6d) | 2022-12-27 → 2023-01-02 (+6d) |  |  |  | resources none → Testadora |
| 39 | Gerar a instalação | 2022-12-28 → 2023-01-03 (+6d) | 2022-12-29 → 2023-01-04 (+6d) |  |  |  | resources none → 1 |
| 40 | Fazer o plano de implantação | 2022-12-30 → 2023-01-05 (+6d) | 2023-01-02 → 2023-01-06 (+4d) |  |  |  | resources none → Analista de sistemas |
| 41 | Instalar o sistema | 2023-01-03 → 2023-01-09 (+6d) | 2023-01-06 → 2023-01-12 (+6d) |  |  |  | resources none → 1 |
| 42 | Obter a aceitação do cliente | 2023-01-09 → 2023-01-13 (+4d) | 2023-01-10 → 2023-01-16 (+6d) |  |  |  | resources none → Gerente de Projetos |
| 43 | **Monitoramento e Controle** | 2023-01-11 → 2023-01-17 (+6d) | 2023-01-17 → 2023-02-06 (+20d) | 5d → 15d |  |  |  |
| 44 | Acompanhar os riscos do projeto | 2023-01-11 → 2023-01-17 (+6d) | 2023-01-17 → 2023-01-23 (+6d) |  |  |  | resources none → Analista de sistemas |
| 45 | Acompanhar os requisitos do projeto | 2023-01-11 → 2023-01-24 (+13d) | 2023-01-16 → 2023-01-27 (+11d) |  | 1d → 0d | none → 44 | resources none → Analista de sistemas |
| 46 | Atualizar medidas | 2023-01-11 → 2023-01-30 (+19d) | 2023-01-13 → 2023-02-01 (+19d) |  | 2d → 0d | none → 45 | resources none → 1 |
| 47 | Executar ações corretivas | 2023-01-11 → 2023-02-02 (+22d) | 2023-01-13 → 2023-02-06 (+24d) |  | 2d → 0d | none → 46 | resources none → 1 |
| 48 | **Fechamento** | 2023-01-18 → 2023-02-07 (+20d) | 2023-01-19 → 2023-02-08 (+20d) |  |  |  |  |
| 49 | Documento de fechamento do projeto | 2023-01-18 → 2023-02-07 (+20d) | 2023-01-19 → 2023-02-08 (+20d) |  |  |  | resources none → Analista de sistemas |
| 50 | Registramos lições aprendidas | 2023-01-18 → 2023-02-07 (+20d) | 2023-01-19 → 2023-02-08 (+20d) |  |  |  | resources none → Gerente de Projetos |

## Version 3 (saved 2022-10-06)

Note of the change: Update Projeto1.mpp

Last finish stays 2023-02-08.

Changed:

| ID | Task | Other |
| --- | --- | --- |
| 3 | Levantar o escopo | resources Gerente de Projetos → Everton |
| 4 | Criar estimativa inicial do projeto | resources Gerente de Projetos → Everton |
| 5 | Gerar orçamento preliminar | resources Analista de sistemas → João |
| 6 | Obter assinatura de contrato | resources Gerente de Projetos → Everton |
| 8 | Plano para o projeto | resources Gerente de Projetos → Everton |
| 9 | Identificar os riscos | resources Analista de sistemas → João |
| 10 | Preparar documento dos requisitos | resources Analista de sistemas → João |
| 11 | Detalhar as estimativas | resources Analista de sistemas → João |
| 12 | Criar o cronograma | resources Gerente de Projetos → Everton |
| 13 | Obter assinatura do cliente | resources Gerente de Projetos → Everton |
| 14 | Fazer os diagramas de UML | resources 1 → Eduardo |
| 17 | Criar o script do banco de dados | resources 1 → Eduardo |
| 19 | 001 – Cria Cadastro de Alunos | resources 2 → Diego |
| 20 | 002 – Criar Cadastro de Cursos | resources 3 → Ana Maria |
| 21 | 003 – Criar Cadastro de Disciplinas | resources 1 → Eduardo |
| 22 | 004 – Criar Cadastro de Salas de Aulas | resources 4 → Joice |
| 23 | 005 – Criar Cadastro de Professores | resources 3 → Ana Maria |
| 24 | 006 – Criar Cadastro de Notas | resources 4 → Joice |
| 25 | 007 – Criar Cadastro de Faltas | resources 2 → Diego |
| 27 | 008 – Criar Relatório de Alunos | resources 1 → Eduardo |
| 28 | 009 – Criar Relatório de Cursos | resources 2 → Diego |
| 29 | 010 – Criar Relatório de Disciplinas | resources 3 → Ana Maria |
| 30 | 011 – Criar Relatório de Salas de Aulas | resources 4 → Joice |
| 31 | 012 - Criar Relatório de Professores | resources 1 → Eduardo |
| 32 | 013 – Criar Relatório de Notas | resources 2 → Diego |
| 33 | 014 – Criar Relatório de Faltas | resources 3 → Ana Maria |
| 34 | 015 – Criar Relatório de Alunos Aprovados | resources 1 → Eduardo |
| 35 | 016 – Criar Relatório de Professores por Curso | resources 2 → Diego |
| 36 | 017 – Criar Relatório de Alunos por Disciplina | resources 4 → Joice |
| 37 | 018 – Criar Relatório de Alunos por Curso | resources 3 → Ana Maria |
| 38 | Testar a aplicação | resources Testadora → Elaine |
| 39 | Gerar a instalação | resources 1 → Eduardo |
| 40 | Fazer o plano de implantação | resources Analista de sistemas → João |
| 41 | Instalar o sistema | resources 1 → Eduardo |
| 42 | Obter a aceitação do cliente | resources Gerente de Projetos → Everton |
| 44 | Acompanhar os riscos do projeto | resources Analista de sistemas → João |
| 45 | Acompanhar os requisitos do projeto | resources Analista de sistemas → João |
| 46 | Atualizar medidas | resources 1 → Eduardo |
| 47 | Executar ações corretivas | resources 1 → Eduardo |
| 49 | Documento de fechamento do projeto | resources Analista de sistemas → João |
| 50 | Registramos lições aprendidas | resources Gerente de Projetos → Everton |

## Version 4 (saved 2022-10-06)

Note of the change: Update Projeto1.mpp

Last finish stays 2023-02-08.

Changed:

| ID | Task | Other |
| --- | --- | --- |
| 1 | **UNIVERSIDADE** | baseline start none → 2022-10-06; baseline finish none → 2023-02-08 |
| 2 | **Prospecção** | baseline start none → 2022-10-06; baseline finish none → 2022-10-17 |
| 3 | Levantar o escopo | baseline start none → 2022-10-06; baseline finish none → 2022-10-07 |
| 4 | Criar estimativa inicial do projeto | baseline start none → 2022-10-10; baseline finish none → 2022-10-11 |
| 5 | Gerar orçamento preliminar | baseline start none → 2022-10-12; baseline finish none → 2022-10-13 |
| 6 | Obter assinatura de contrato | baseline start none → 2022-10-14; baseline finish none → 2022-10-17 |
| 7 | **Planejamento** | baseline start none → 2022-10-18; baseline finish none → 2022-11-07 |
| 8 | Plano para o projeto | baseline start none → 2022-10-18; baseline finish none → 2022-10-20 |
| 9 | Identificar os riscos | baseline start none → 2022-10-21; baseline finish none → 2022-10-25 |
| 10 | Preparar documento dos requisitos | baseline start none → 2022-10-26; baseline finish none → 2022-10-31 |
| 11 | Detalhar as estimativas | baseline start none → 2022-11-01; baseline finish none → 2022-11-02 |
| 12 | Criar o cronograma | baseline start none → 2022-10-21; baseline finish none → 2022-10-24 |
| 13 | Obter assinatura do cliente | baseline start none → 2022-10-25; baseline finish none → 2022-10-26 |
| 14 | Fazer os diagramas de UML | baseline start none → 2022-10-27; baseline finish none → 2022-11-07 |
| 15 | **Execução** | baseline start none → 2022-11-08; baseline finish none → 2023-01-16 |
| 16 | **Banco de dados** | baseline start none → 2022-11-08; baseline finish none → 2022-12-19 |
| 17 | Criar o script do banco de dados | baseline start none → 2022-11-08; baseline finish none → 2022-11-14 |
| 18 | **Cadastros** | baseline start none → 2022-11-15; baseline finish none → 2022-11-30 |
| 19 | 001 – Cria Cadastro de Alunos | baseline start none → 2022-11-15; baseline finish none → 2022-11-21 |
| 20 | 002 – Criar Cadastro de Cursos | baseline start none → 2022-11-15; baseline finish none → 2022-11-18 |
| 21 | 003 – Criar Cadastro de Disciplinas | baseline start none → 2022-11-21; baseline finish none → 2022-11-24 |
| 22 | 004 – Criar Cadastro de Salas de Aulas | baseline start none → 2022-11-15; baseline finish none → 2022-11-17 |
| 23 | 005 – Criar Cadastro de Professores | baseline start none → 2022-11-25; baseline finish none → 2022-11-30 |
| 24 | 006 – Criar Cadastro de Notas | baseline start none → 2022-11-25; baseline finish none → 2022-11-30 |
| 25 | 007 – Criar Cadastro de Faltas | baseline start none → 2022-11-22; baseline finish none → 2022-11-25 |
| 26 | **Relatórios** | baseline start none → 2022-12-01; baseline finish none → 2022-12-19 |
| 27 | 008 – Criar Relatório de Alunos | baseline start none → 2022-12-01; baseline finish none → 2022-12-06 |
| 28 | 009 – Criar Relatório de Cursos | baseline start none → 2022-12-01; baseline finish none → 2022-12-06 |
| 29 | 010 – Criar Relatório de Disciplinas | baseline start none → 2022-12-01; baseline finish none → 2022-12-06 |
| 30 | 011 – Criar Relatório de Salas de Aulas | baseline start none → 2022-12-01; baseline finish none → 2022-12-06 |
| 31 | 012 - Criar Relatório de Professores | baseline start none → 2022-12-07; baseline finish none → 2022-12-12 |
| 32 | 013 – Criar Relatório de Notas | baseline start none → 2022-12-07; baseline finish none → 2022-12-12 |
| 33 | 014 – Criar Relatório de Faltas | baseline start none → 2022-12-07; baseline finish none → 2022-12-12 |
| 34 | 015 – Criar Relatório de Alunos Aprovados | baseline start none → 2022-12-13; baseline finish none → 2022-12-16 |
| 35 | 016 – Criar Relatório de Professores por Curso | baseline start none → 2022-12-13; baseline finish none → 2022-12-19 |
| 36 | 017 – Criar Relatório de Alunos por Disciplina | baseline start none → 2022-12-07; baseline finish none → 2022-12-13 |
| 37 | 018 – Criar Relatório de Alunos por Curso | baseline start none → 2022-12-14; baseline finish none → 2022-12-19 |
| 38 | Testar a aplicação | baseline start none → 2022-12-20; baseline finish none → 2023-01-02 |
| 39 | Gerar a instalação | baseline start none → 2023-01-03; baseline finish none → 2023-01-04 |
| 40 | Fazer o plano de implantação | baseline start none → 2023-01-05; baseline finish none → 2023-01-06 |
| 41 | Instalar o sistema | baseline start none → 2023-01-09; baseline finish none → 2023-01-12 |
| 42 | Obter a aceitação do cliente | baseline start none → 2023-01-13; baseline finish none → 2023-01-16 |
| 43 | **Monitoramento e Controle** | baseline start none → 2023-01-17; baseline finish none → 2023-02-06 |
| 44 | Acompanhar os riscos do projeto | baseline start none → 2023-01-17; baseline finish none → 2023-01-23 |
| 45 | Acompanhar os requisitos do projeto | baseline start none → 2023-01-24; baseline finish none → 2023-01-27 |
| 46 | Atualizar medidas | baseline start none → 2023-01-30; baseline finish none → 2023-02-01 |
| 47 | Executar ações corretivas | baseline start none → 2023-02-02; baseline finish none → 2023-02-06 |
| 48 | **Fechamento** | baseline start none → 2023-02-07; baseline finish none → 2023-02-08 |
| 49 | Documento de fechamento do projeto | baseline start none → 2023-02-07; baseline finish none → 2023-02-08 |
| 50 | Registramos lições aprendidas | baseline start none → 2023-02-07; baseline finish none → 2023-02-08 |
